# 国家消防救援局项目

Schedule from a web Gantt chart, 2024-04-08 to 2024-05-01.
Saturdays and Sundays are off

## Schedule

| ID | WBS | Task | Duration | Start | Finish | Complete | inPeople | Status |
| --- | --- | --- | --- | --- | --- | --- | --- | --- |
| 2 | 1 | 项目启动 | 1d | 2024-04-08 | 2024-04-08 | 100% | 谷先 | done |
| 3 | 2 | **产品设计** | 7d | 2024-04-08 | 2024-04-16 | 100% | 万鸣宇 | done |
| 4 | 2.1 | 登录页、成员管理、无人机管理、负载管理页面设计 | 3d | 2024-04-08 | 2024-04-10 | 100% | 万鸣宇 | done |
| 5 | 2.2 | 总览页产品设计 | 7d | 2024-04-08 | 2024-04-16 | 100% | 万鸣宇 | done |
| 6 | 3 | UI页面设计 | 4d | 2024-04-17 | 2024-04-22 |  | 邵国栋 |  |
| 7 | 4 | **前后端开发** | 8d | 2024-04-12 | 2024-04-23 |  | 张卫群 |  |
| 8 | 4.1 | 前端开发 | 8d | 2024-04-12 | 2024-04-23 |  | 刘敏 |  |
| 9 | 4.2 | 后端开发 | 8d | 2024-04-12 | 2024-04-23 |  | 张卫群 |  |
| 10 | 5 | 测试 | 3d | 2024-04-24 | 2024-04-26 |  |  | waiting |
| 11 | 6 | 部署 | 3d | 2024-04-29 | 2024-05-01 |  |  | waiting |
| 12 | 7 | 项目一期完成 | 1d | 2024-04-30 | 2024-04-30 |  |  | waiting |
